# lidar

How a schedule from MS Project changed from version to version. A marks actual dates.

## Version 1 (saved 2016-08-26)

| ID | WBS | Task | Duration | Start | Finish | Predecessors | Complete | Total float | Constraint |
| --- | --- | --- | --- | --- | --- | --- | --- | --- | --- |
| 1 | 1 | **lidar_mrpt** | 24d | 2015-07-22 A | 2015-08-25 A |  | 100% |  |  |
| 2 |  | uwb_localization-test | 0.5d | 2015-07-22 A | 2015-07-22 A |  | 100% |  | start no earlier than 2015-07-22 |
| 3 |  | hokuyo_laser_scan | 2d | 2015-07-22 A | 2015-07-24 A |  | 100% |  | start no earlier than 2015-07-22 |
| 4 |  | communication-config | 1d | 2015-07-24 A | 2015-07-27 A | 3 | 100% |  | start no earlier than 2015-07-24 |
| 5 |  | mrpt-tutorial | 2d | 2015-07-27 A | 2015-07-29 A | 4 | 100% |  | start no earlier than 2015-07-27 |
| 6 |  | mrpt-slam | 8d | 2015-07-29 A | 2015-08-10 A | 5 | 100% |  | finish no earlier than 2015-08-07 |
| 7 |  | mrpt-navigation | 5d | 2015-08-10 A | 2015-08-17 A | 6 | 100% |  | start no earlier than 2015-08-10 |
| 8 |  | chassis-remake | 5d | 2015-08-17 A | 2015-08-24 A |  | 100% |  | start no earlier than 2015-08-17 |
| 9 |  | mrpt-recovery | 6d | 2015-08-17 A | 2015-08-25 A | 7 | 100% |  | start no earlier than 2015-08-17 |
| 10 | 2 | **lidar_ros** | 42.88d | 2015-08-20 A | 2015-10-16 A |  | 100% |  |  |
| 11 |  | ros-tutorial | 6d | 2015-08-20 A | 2015-08-28 A |  | 100% |  | finish no earlier than 2015-08-27 |
| 12 |  | hokuyo_urg | 2d | 2015-08-28 A | 2015-09-01 A | 11 | 100% |  | start no earlier than 2015-08-27 |
| 13 |  | hector_slam | 3d | 2015-08-31 A | 2015-09-03 A |  | 100% |  | finish no earlier than 2015-09-02 |
| 14 |  | hector_navigation | 4d | 2015-09-01 A | 2015-09-06 A |  | 100% |  | finish no earlier than 2015-09-06 |
| 15 |  | joystick | 5d | 2015-09-01 A | 2015-09-07 A |  | 100% |  | finish no earlier than 2015-09-06 |
| 16 |  | navigation | 2d | 2015-09-06 A | 2015-09-08 A |  | 100% |  | finish no earlier than 2015-09-08 |
| 17 |  | noise_filter | 2d | 2015-09-08 A | 2015-09-10 A |  | 100% |  | start no earlier than 2015-09-08 |
| 18 |  | costmap_obstacle | 2d | 2015-09-11 A | 2015-09-14 A | 17 | 100% |  | finish no earlier than 2015-09-14 |
| 19 |  | map_server | 4d | 2015-09-15 A | 2015-09-18 A | 18 | 100% |  |  |
| 20 |  | rviz_plugin | 6d | 2015-09-21 A | 2015-09-28 A | 19 | 100% |  |  |
| 21 |  | timing_check | 5d | 2015-09-18 A | 2015-09-25 A |  | 100% |  | start no earlier than 2015-09-18 |
| 22 |  | amcl_kidnap | 9d | 2015-09-29 A | 2015-10-09 A | 20 | 100% |  |  |
| 23 |  | exploration | 9d | 2015-09-29 A | 2015-10-09 A | 20 | 100% |  |  |
| 24 |  | code_management | 5d | 2015-10-12 A | 2015-10-16 A | 23 | 100% |  | start no earlier than 2015-09-08 |
| 25 |  | mwcs-shanghai-2015 | 0d | 2015-11-03 A | 2015-11-03 A |  | 100% |  | start no earlier than 2015-11-03 |
| 26 | 4 | **chassis_ros** | 51d | 2015-09-18 A | 2015-11-30 A |  | 100% |  |  |
| 27 |  | design_and_assembly | 4d | 2015-09-18 A | 2015-09-24 A |  | 100% |  | start no earlier than 2015-09-18 |
| 28 |  | glass_detection | 5d | 2015-09-21 A | 2015-09-28 A |  | 100% |  | start no earlier than 2015-09-21 |
| 29 |  | kidnap_rescue | 15d | 2015-10-12 A | 2015-10-30 A | 22 | 100% |  |  |
| 30 |  | control_protocol | 10d | 2015-11-02 A | 2015-11-13 A | 29 | 100% |  |  |
| 31 |  | system_testing | 20d | 2015-10-19 A | 2015-11-16 A |  | 100% |  | start no earlier than 2015-10-19 |
| 32 |  | document_release | 10d | 2015-11-16 A | 2015-11-30 A | 31, 30 | 100% |  |  |
| 33 |  | sr_show-shanghai-2015 | 0d | 2015-12-10 A | 2015-12-10 A |  | 100% |  | start no earlier than 2015-11-03 |
| 34 | 6 | **extent_ros** | 40d | 2015-11-30 A | 2016-01-25 A | 26 | 100% |  |  |
| 35 |  | sr_show_warmup | 10d | 2015-11-30 A | 2015-12-14 A |  | 100% |  | finish no earlier than 2015-12-09 |
| 36 |  | mapping_2.5D | 5d | 2015-11-30 A | 2015-12-07 A |  | 100% |  |  |
| 37 |  | servo_odometry | 5d | 2015-12-14 A | 2015-12-18 A | 35, 36 | 100% |  |  |
| 38 |  | imu_odometry | 3d | 2015-12-21 A | 2015-12-24 A | 37 | 100% |  |  |
| 39 |  | hall_odometry | 6d | 2015-12-24 A | 2016-01-01 A | 38 | 100% |  |  |
| 40 |  | pose_follower | 13d | 2016-01-01 A | 2016-01-20 A | 39 | 100% |  |  |
| 41 |  | rviz_serial | 10d | 2015-11-30 A | 2015-12-14 A |  | 100% |  |  |
| 42 |  | rviz_socket | 10d | 2015-12-14 A | 2015-12-28 A | 41 | 100% |  |  |
| 43 |  | rviz_html5 | 20d | 2015-12-28 A | 2016-01-25 A | 42 | 100% |  |  |
| 44 |  | ces-lasvagas-2016 | 0d | 2015-11-30 A | 2016-01-06 A |  | 100% |  | start no earlier than 2015-11-03 |
| 45 |  | caesar-lasvagas-2016 | 0d | 2015-11-30 A | 2016-02-07 A |  | 100% |  | start no earlier than 2015-11-03 |
| 46 | 9 | **outdoor_ros** | 91d | 2016-01-01 A | 2016-05-06 A | 39 | 100% |  |  |
| 47 |  | octomap_mapping | 5d | 2016-01-01 A | 2016-01-08 A |  | 100% |  |  |
| 48 |  | lidar_skeleton | 10d | 2016-01-20 A | 2016-02-03 A | 40 | 100% |  | start no earlier than 2015-09-29 |
| 49 |  | chassis_assembly | 9d | 2016-01-25 A | 2016-02-05 A | 43 | 100% |  | start no earlier than 2015-09-29 |
| 50 |  | web_tools | 10d | 2016-02-14 A | 2016-02-26 A |  | 100% |  | start no earlier than 2016-02-14 |
| 51 |  | people_tracker | 20d | 2016-02-26 A | 2016-03-25 A | 50 | 100% |  |  |
| 52 |  | slam_tilt | 20d | 2016-03-25 A | 2016-04-22 A | 51 | 100% |  | start no earlier than 2015-09-29 |
| 53 |  | omni_wheels | 10d | 2016-04-22 A | 2016-05-06 A |  | 100% |  | start no earlier than 2015-10-27 |
| 54 | 10 | **maintenance** | 60d | 2016-05-06 A | 2016-07-29 A | 46 | 100% |  |  |
| 55 |  | release-1.1.1.1_beta | 10d | 2016-05-06 A | 2016-05-20 A |  | 100% |  |  |
| 56 |  | imu_ekf | 20d | 2016-05-20 A | 2016-06-17 A | 55 | 100% |  |  |
| 57 |  | release-1.1.1.3_beta | 10d | 2016-06-17 A | 2016-07-01 A | 56 | 100% |  |  |
| 58 |  | html5_websocket | 15d | 2016-07-01 A | 2016-07-22 A | 57 | 100% |  |  |
| 59 |  | clear_costmap_recovery | 4d | 2016-07-25 A | 2016-07-29 A | 58 | 100% |  |  |
| 60 |  | pokemon go | 0d | 2016-08-01 A | 2016-08-01 A |  | 100% |  | start no earlier than 2016-07-25 |
| 61 | 12 | **lidar_forklift** | 60.25d? | 2016-08-01 A | 2016-10-24 | 60 | 21% | 0d |  |
| 62 |  | plc_controller | 6d | 2016-08-01 A | 2016-08-09 A |  | 100% |  |  |
| 63 |  | cable_structure | 7d? | 2016-08-09 A | 2016-08-18 | 62 | 75% | 0d |  |
| 64 |  | drive_aqmd | 7d? | 2016-08-09 A | 2016-08-25 | 59, 63 | 25% | 0d |  |
| 65 |  | hector_mapping | 7d? | 2016-08-25 | 2016-09-05 | 64 |  | 0d |  |
| 66 |  | teb_local_planner | 7d? | 2016-09-05 | 2016-09-14 | 65 |  | 0d |  |
| 67 |  | robot_localization | 7d? | 2016-09-14 | 2016-09-23 | 66 |  | 0d |  |
| 68 |  | lift_testing | 7d? | 2016-09-23 | 2016-10-04 | 67 |  | 0d |  |
| 69 |  | navigation_testing | 14d? | 2016-10-04 | 2016-10-24 | 68 |  | 0d |  |
| 70 | 13 | **ros_org** | 29d? | 2016-08-01 A | 2016-09-09 | 60 | 31% | 31.25d |  |

| ID | WBS | Task | Duration | Start | Finish | Predecessors | Complete | Total float |
| --- | --- | --- | --- | --- | --- | --- | --- | --- |
| 71 |  | github_remote_update | 11d | 2016-08-01 A | 2016-08-31 A |  | 100% |  |
| 72 |  | rosbridge_tcp | 2d | 2016-08-01 A | 2016-08-17 A | 71 | 100% |  |
| 73 |  | system_diagnostics | 7d? | 2016-08-17 A | 2016-08-26 | 72 | 50% | 41.25d |
| 74 |  | qt_bridge | 14d? | 2016-08-01 A | 2016-08-19 |  | 25% | 46.25d |
| 75 |  | velocity_smooth | 14d? | 2016-08-01 A | 2016-08-19 |  | 25% | 46.25d |
| 76 |  | velocity_follow | 1d? | 2016-08-01 | 2016-08-02 |  |  | 59.25d |
| 77 |  | velocity_filter | 1d? | 2016-08-01 | 2016-08-02 |  |  | 59.25d |
| 78 |  | chassis_qiuqiu | 3d | 2016-08-01 A | 2016-08-04 A |  | 100% |  |
| 79 |  | visual_odometry | 7d? | 2016-08-01 A | 2016-08-10 |  | 75% | 53.25d |
| 80 |  | speech_commands | 7d? | 2016-08-04 A | 2016-08-15 | 78 | 25% | 50.25d |
| 81 |  | speech_recognition | 1d? | 2016-08-01 | 2016-08-02 |  |  | 59.25d |
| 82 |  | speech_semantic | 1d? | 2016-08-01 | 2016-08-02 |  |  | 59.25d |
| 83 |  | speech_tts | 1d? | 2016-08-01 | 2016-08-02 |  |  | 59.25d |
| 84 |  | drive_aqmd | 7d? | 2016-08-31 | 2016-09-09 | 78, 71 |  | 31.25d |
| 85 |  | drive_hinson | 1d? | 2016-08-01 | 2016-08-02 |  |  | 59.25d |
| 86 |  | drive_servo | 1d? | 2016-08-01 | 2016-08-02 |  |  | 59.25d |
| 87 |  | lidar_noise | 1d? | 2016-08-01 | 2016-08-02 |  |  | 59.25d |
| 88 |  | skeleton_detection | 1d? | 2016-08-01 | 2016-08-02 |  |  | 59.25d |
| 89 |  | face_detection | 1d? | 2016-08-01 | 2016-08-02 |  |  | 59.25d |
| 90 |  | leg_detection | 1d? | 2016-08-01 | 2016-08-02 |  |  | 59.25d |
| 91 |  | chassis_dahui | 1d? | 2016-08-01 | 2016-08-02 |  |  | 58.25d |
| 92 |  | terminal_architecture | 1d? | 2016-08-01 | 2016-08-02 |  |  | 59.25d |
| 93 |  | terminal_controller | 1d? | 2016-08-04 | 2016-08-05 | 78, 91 |  | 56.25d |
| 94 |  | terminal_navigator | 1d? | 2016-08-01 | 2016-08-02 |  |  | 59.25d |
| 95 |  | terminal_configurator | 1d? | 2016-08-01 | 2016-08-02 |  |  | 59.25d |
| 96 |  | power_protection | 1d? | 2016-08-01 | 2016-08-02 |  |  | 59.25d |
| 97 |  | chassis_dapan | 1d? | 2016-08-01 | 2016-08-02 |  |  | 59.25d |
| 98 |  | motor_braker | 1d? | 2016-08-01 | 2016-08-02 |  |  | 59.25d |
| 99 |  | sensor_bumper | 1d? | 2016-08-01 | 2016-08-02 |  |  | 59.25d |
| 100 |  | sensor_sonar | 1d? | 2016-08-01 | 2016-08-02 |  |  | 59.25d |
| 101 |  | sensor_infrared | 1d? | 2016-08-01 | 2016-08-02 |  |  | 59.25d |
| 102 |  | rplidar | 1d? | 2016-08-01 | 2016-08-02 |  |  | 59.25d |
| 103 |  | delidar | 1d? | 2016-08-01 | 2016-08-02 |  |  | 59.25d |
| 104 |  | velodyne | 1d? | 2016-08-01 | 2016-08-02 |  |  | 59.25d |
| 105 |  | orbmap | 1d? | 2016-08-01 | 2016-08-02 |  |  | 59.25d |
| 106 |  | rtabmap | 1d? | 2016-08-01 | 2016-08-02 |  |  | 59.25d |
| 107 |  | pcl | 1d? | 2016-08-01 | 2016-08-02 |  |  | 59.25d |
| 108 |  | map_input | 1d? | 2016-08-01 | 2016-08-02 |  |  | 59.25d |
| 109 |  | fall_prevention | 1d? | 2016-08-01 | 2016-08-02 |  |  | 59.25d |
| 110 |  | emergency_break | 1d? | 2016-08-01 | 2016-08-02 |  |  | 59.25d |
| 111 |  | global_localization | 1d? | 2016-08-01 | 2016-08-02 |  |  | 59.25d |
| 112 |  | map_editor | 1d? | 2016-08-01 | 2016-08-02 |  |  | 59.25d |
| 113 |  | map_multi_layers | 1d? | 2016-08-01 | 2016-08-02 |  |  | 59.25d |
| 114 |  | use_elevator | 1d? | 2016-08-01 | 2016-08-02 |  |  | 59.25d |
| 115 | 14 | **multi_robots** | 1d? | 2015-11-30 | 2015-12-01 | 26 |  | 235.25d |
| 116 |  | <新任务> | 1d? | 2015-11-30 | 2015-12-01 |  |  | 235.25d |
| 117 | 15 | **auto_docking** | 1d? | 2015-11-30 | 2015-12-01 | 26 |  | 235.25d |
| 118 |  | <新任务> | 1d? | 2015-11-30 | 2015-12-01 |  |  | 235.25d |

## Version 2 (saved 2016-08-26)

Last finish 2016-10-24 → 2016-11-04 (+11d). Complete tasks 58 → 65.

Added:

| ID | Task | Duration | Start | Finish | Predecessors | Constraint | Resources |
| --- | --- | --- | --- | --- | --- | --- | --- |
| 64 | plc_replace | 7d? | 2016-08-22 A | 2016-08-31 | 63 |  | 陈新春; 仇隽挺 |
| 65 | direct_communication | 1d? | 2016-08-31 | 2016-09-01 | 64 |  | 仇隽挺; 张邺 |
| 77 | costmap_inflation | 2d | 2016-08-22 A | 2016-08-24 A |  | start no earlier than 2016-08-22 | 韩立芹; 张邺 |
| 78 | gmapping_pose | 2d | 2016-08-24 A | 2016-08-26 A |  | start no earlier than 2016-08-22 | 韩立芹; 张邺 |
| 80 | image_transport | 7d | 2016-08-12 A | 2016-08-23 A | 84 |  | 陆亚辉; 潘力澜 |
| 81 | vedio_transport | 7d? | 2016-08-23 A | 2016-09-01 | 80 |  | 陆亚辉; 陈新春 |
| 82 | orbmap_slam | 14d? | 2016-08-19 A | 2016-09-08 | 79 |  | 潘力澜 |
| 88 | apache_server | 7d? | 2016-08-30 | 2016-09-08 | 74 |  | 陈新春; 张邺 |
| 96 | modbus_tcp | 1d? | 2016-08-01 | 2016-08-02 |  |  | 吴兵; 张邺 |
| 100 | host_rk3288 | 1d? | 2016-08-01 | 2016-08-02 |  |  |  |

Removed: 105 orbmap

Changed:

| ID | Task | Start | Finish | Duration | Complete | Total float | Predecessors | Other |
| --- | --- | --- | --- | --- | --- | --- | --- | --- |
| 61 | **lidar_forklift** |  | 2016-10-24 → 2016-11-04 (+11d) | 60.25d? → 69.25d? | 21% → 26% |  |  |  |
| 63 | cable_structure |  | 2016-08-18 → 2016-08-22 A (+4d) | 7d? → 9d | 75% → 100% | 0d → none |  |  |
| 66 | drive_aqmd |  | 2016-08-25 → 2016-09-07 (+13d) |  |  |  | 59, 63 → 59, 64 |  |
| 67 | hector_mapping | 2016-08-25 → 2016-09-07 (+13d) | 2016-09-05 → 2016-09-16 (+11d) |  |  |  |  |  |
| 68 | teb_local_planner | 2016-09-05 → 2016-09-16 (+11d) | 2016-09-14 → 2016-09-27 (+13d) |  |  |  |  |  |
| 69 | robot_localization | 2016-09-14 → 2016-09-27 (+13d) | 2016-09-23 → 2016-10-06 (+13d) |  |  |  |  |  |
| 70 | lift_testing | 2016-09-23 → 2016-10-06 (+13d) | 2016-10-04 → 2016-10-17 (+13d) |  |  |  |  |  |
| 71 | navigation_testing | 2016-10-04 → 2016-10-17 (+13d) | 2016-10-24 → 2016-11-04 (+11d) |  |  |  |  |  |
| 72 | **ros_org** |  | 2016-09-09 → 2016-09-08 (-1d) | 29d? → 28d? | 31% → 52% | 31.25d → 41.25d |  |  |
| 73 | remote_update |  | 2016-08-31 A → 2016-08-16 A (-15d) |  |  |  |  | was named github_remote_update |
| 74 | system_diagnostics | 2016-08-17 A → 2016-08-19 A (+2d) | 2016-08-26 → 2016-08-30 (+4d) |  |  |  | 75 → 73, 75 |  |
| 75 | rosbridge_tcp | 2016-08-01 A → 2016-08-17 A (+16d) | 2016-08-17 A → 2016-08-19 A (+2d) |  |  |  |  | constraint none → start no earlier than 2016-08-17 |
| 76 | lidar_noise | 2016-08-01 → 2016-08-22 A (+21d) | 2016-08-02 → 2016-08-26 A (+24d) | 1d? → 4d | 0% → 100% | 59.25d → none |  | constraint none → start no earlier than 2016-08-22 |
| 79 | visual_odometry |  | 2016-08-10 → 2016-08-19 A (+9d) | 7d? → 14d | 75% → 100% | 53.25d → none |  |  |
| 84 | speech_commands |  | 2016-08-15 → 2016-08-12 A (-3d) | 7d? → 6d | 25% → 100% | 50.25d → none |  |  |
| 89 | terminal_controller | 2016-08-04 → 2016-08-15 A (+11d) | 2016-08-05 → 2016-09-02 (+28d) | 1d? → 14d? | 0% → 75% | 56.25d → 45.25d | 83, 104 → 83, 84 | resources 陈新春; 张邺 → 陈新春; 陆亚辉 |
| 92 | qt_bridge |  | 2016-08-19 → 2016-08-02 (-17d) | 14d? → 1d? |  | 46.25d → 68.25d |  |  |
| 93 | velocity_smooth |  | 2016-08-19 → 2016-08-02 (-17d) | 14d? → 1d? |  | 46.25d → 68.25d |  |  |
| 97 | drive_aqmd | 2016-08-31 → 2016-08-16 (-15d) | 2016-09-09 → 2016-08-25 (-15d) |  |  | 31.25d → 51.25d |  |  |

## Version 3 (saved 2016-09-22)

Last finish 2016-11-04 → 2016-11-22 (+18d). Complete tasks 65 → 77.

Added:

| ID | Task | Duration | Start | Finish | Predecessors | Constraint | Resources |
| --- | --- | --- | --- | --- | --- | --- | --- |
| 71 | chassis_miniqiu | 21d? | 2016-08-30 A | 2016-10-25 | 64, 65 |  | 仇隽挺; 张邺 |
| 74 | miniqiu_platform | 0d | 2016-10-07 | 2016-10-07 |  | start no earlier than 2016-10-07 |  |
| 78 | release_github | 11d | 2016-08-01 A | 2016-08-16 A |  |  | 张邺; 韩立芹 |
| 92 | chassis_minihui | 7d | 2016-08-31 A | 2016-09-09 A | 87 |  | 陆亚辉; 仇隽挺 |
| 93 | host_pa3_ttyS | 6d | 2016-09-02 A | 2016-09-12 A | 88 |  | 张邺; 韩立芹 |
| 98 | orb_localization | 14d? | 2016-09-13 A | 2016-10-10 | 94 |  | 潘力澜 |
| 99 | android_ndk | 1d? | 2016-08-01 | 2016-08-02 |  |  | 秦伟明; 张邺 |
| 101 | pocket_sphnix | 1d? | 2016-09-19 | 2016-09-20 |  | start no earlier than 2016-09-19 |  |
| 104 | dhcp_ifconfig | 1d? | 2016-09-12 | 2016-09-13 | 93 |  |  |
| 105 | local_oscilliation | 1d? | 2016-09-12 | 2016-09-13 | 93 |  |  |
| 106 | time_position_mode | 1d? | 2016-09-12 | 2016-09-13 | 93 |  |  |
| 107 | odom_feedback | 1d? | 2016-09-12 | 2016-09-13 | 93 |  |  |
| 108 | navigation_improvement | 1d? | 2016-09-21 | 2016-09-22 | 96 |  |  |
| 116 | lidar_warning | 1d? | 2016-08-01 | 2016-08-02 |  |  |  |

Changed:

| ID | Task | Start | Finish | Duration | Complete | Total float | Predecessors | Other |
| --- | --- | --- | --- | --- | --- | --- | --- | --- |
| 61 | **lidar_forklift** |  | 2016-11-04 → 2016-11-22 (+18d) | 69.25d? → 76d? | 26% → 30% |  |  |  |
| 64 | direct_communication | 2016-08-31 → 2016-08-22 A (-9d) | 2016-09-01 → 2016-08-30 A (-2d) | 1d? → 6d | 0% → 100% | 46.25d → none | 68 → 63 |  |
| 65 | chassis_zoe | 2016-08-01 → 2016-09-07 A (+37d) | 2016-08-02 → 2016-09-28 (+57d) | 1d? → 14d? | 0% → 38% | 68.25d → 0d | none → 64 | was named chassis_dapan; resources none → 陆亚辉; 仇隽挺 |
| 66 | hector_mapping | 2016-09-07 → 2016-09-28 (+21d) | 2016-09-16 → 2016-10-13 (+27d) |  |  | 0d → 28d | 69 → 65 |  |
| 67 | teb_local_planner | 2016-09-16 → 2016-09-28 (+12d) | 2016-09-27 → 2016-10-13 (+16d) |  |  |  | 66 → 65 |  |
| 68 | plc_replacement | 2016-08-22 A → 2016-09-28 (+37d) | 2016-08-31 → 2016-10-13 (+43d) |  | 25% → 0% |  | 63 → 65 | was named plc_replace |
| 69 | drive_aqmd |  | 2016-09-07 → 2016-10-20 (+43d) |  |  | 0d → 22.75d |  |  |
| 70 | robot_localization | 2016-09-27 → 2016-10-13 (+16d) | 2016-10-06 → 2016-10-24 (+18d) |  |  |  |  |  |
| 72 | lift_testing | 2016-10-06 → 2016-10-24 (+18d) | 2016-10-17 → 2016-11-02 (+16d) |  |  |  |  |  |
| 73 | navigation_testing | 2016-10-17 → 2016-11-02 (+16d) | 2016-11-04 → 2016-11-22 (+18d) |  |  |  |  |  |
| 75 | **ros_org** |  | 2016-09-08 → 2016-10-10 (+32d) | 28d? → 45d? | 52% → 69% | 41.25d → 31d |  | resources 陈新春; 仇隽挺; 韩立芹; 陆亚辉; 潘力澜; 张邺 → 韩立芹; 陆亚辉; 潘力澜; 张邺; 秦伟明; 陈新春; 仇隽挺 |
| 79 | rosbridge_tcp |  | 2016-08-19 A → 2016-08-18 A (-1d) | 2d → 1d |  |  | 86 → 78 |  |
| 83 | drive_aqmd | 2016-08-16 A | 2016-08-25 A | 7d? → 7d | 0% → 100% | 51.25d → none | 86, 76 → 78, 76 |  |
| 86 | remote_update | 2016-08-01 A → 2016-08-18 A (+17d) | 2016-08-16 A → 2016-08-31 A (+15d) | 11d → 9d |  |  | none → 79 | resources 韩立芹; 张邺 → 张邺; 韩立芹 |
| 87 | vedio_transport |  | 2016-09-01 → 2016-08-31 A (-1d) | 7d? → 6d | 25% → 100% | 46.25d → none |  |  |
| 88 | apache_server | 2016-08-30 → 2016-08-31 A (+1d) | 2016-09-08 → 2016-09-02 A (-6d) | 7d? → 2d | 0% → 100% | 41.25d → none | 96 → 86 |  |
| 89 | terminal_controller |  | 2016-09-02 A | 14d? → 14d | 75% → 100% | 45.25d → none |  |  |
| 90 | drive_hinson | 2016-08-01 → 2016-08-31 A (+30d) | 2016-08-02 → 2016-09-05 A (+34d) | 1d? → 3d | 0% → 100% | 68.25d → none | none → 86 | resources none → 仇隽挺; 张邺 |
| 91 | speech_recognition | 2016-08-01 → 2016-08-31 A (+30d) | 2016-08-02 → 2016-09-09 A (+38d) | 1d? → 7d | 0% → 100% | 68.25d → none | none → 87 | resources none → 陆亚辉; 陈新春 |
| 94 | orb_slam |  | 2016-09-08 → 2016-09-13 A (+5d) | 14d? → 17d | 50% → 100% | 41.25d → none |  | was named orbmap_slam |
| 95 | rosbridge_driver | 2016-08-01 → 2016-09-12 A (+42d) | 2016-08-02 → 2016-09-22 A (+51d) | 1d? → 7d | 0% → 100% | 68.25d → none | none → 93 | was named modbus_tcp; constraint none → start no earlier than 2016-09-07; resources 吴兵; 张邺 → 张邺 |
| 96 | system_diagnostics | 2016-08-19 A → 2016-08-31 A (+12d) | 2016-08-30 → 2016-09-21 (+22d) | 7d? → 14d? | 50% → 75% | 41.25d → 36.62d | 86, 79 → 86 |  |
| 97 | terminal_navigator | 2016-08-01 → 2016-08-31 A (+30d) | 2016-08-02 → 2016-09-30 (+59d) | 1d? → 21d? | 0% → 25% | 68.25d → 32d | none → 86, 87 | resources none → 陈新春; 张邺 |
| 102 | speech_semantic | 2016-08-01 → 2016-09-20 (+50d) | 2016-08-02 → 2016-09-21 (+50d) |  |  | 68.25d → 39d | none → 91, 101 |  |
| 103 | speech_tts | 2016-08-01 → 2016-09-21 (+51d) | 2016-08-02 → 2016-09-22 (+51d) |  |  | 68.25d → 39d | none → 102 |  |
| 109 | terminal_configurator | 2016-08-01 → 2016-09-30 (+60d) | 2016-08-02 → 2016-10-08 (+67d) |  |  | 68.25d → 32d | none → 97 |  |
| 110 | motor_servo | 2016-08-01 → 2016-09-05 (+35d) | 2016-08-02 → 2016-09-06 (+35d) |  |  | 68.25d → 50d | none → 90 | was named drive_servo |
| 111 | velocity_smooth | 2016-08-01 A → 2016-09-21 (+51d) | 2016-08-02 → 2016-09-22 (+51d) |  | 25% → 0% | 68.25d → 36.62d | none → 96 | resources 韩立芹; 张邺 → none |
| 112 | velocity_follow | 2016-08-01 → 2016-09-22 (+52d) | 2016-08-02 → 2016-09-23 (+52d) |  |  | 68.25d → 36.62d | none → 111 |  |
| 113 | velocity_filter | 2016-08-01 → 2016-09-23 (+53d) | 2016-08-02 → 2016-09-26 (+55d) |  |  | 68.25d → 36.62d | none → 112 |  |

## Version 4 (saved 2016-09-22)

Last finish stays 2016-11-22. Complete tasks 77 → 78.

Changed:

| ID | Task | Start | Finish | Duration | Complete | Total float |
| --- | --- | --- | --- | --- | --- | --- |
| 75 | **ros_org** |  |  |  | 69% → 71% |  |
| 96 | system_diagnostics |  | 2016-09-21 → 2016-09-22 A (+1d) | 14d? → 15d | 75% → 100% | 36.62d → none |
| 108 | navigation_improvement | 2016-09-21 → 2016-09-22 (+1d) | 2016-09-22 → 2016-09-23 (+1d) |  |  | 38.62d → 37.62d |
| 111 | velocity_smooth | 2016-09-21 → 2016-09-22 (+1d) | 2016-09-22 → 2016-09-23 (+1d) |  |  | 36.62d → 35.62d |
| 112 | velocity_follow | 2016-09-22 → 2016-09-23 (+1d) | 2016-09-23 → 2016-09-26 (+3d) |  |  | 36.62d → 35.62d |
| 113 | velocity_filter | 2016-09-23 → 2016-09-26 (+3d) | 2016-09-26 → 2016-09-27 (+1d) |  |  | 36.62d → 35.62d |

## Version 5 (saved 2016-09-24)

Note of the change: update group-ros.mpp

Last finish 2016-11-22 → 2016-11-17 (-5d). Complete tasks 78 → 79.

Added:

| ID | Task | Duration | Start | Finish | Predecessors | Resources |
| --- | --- | --- | --- | --- | --- | --- |
| 99 | diagnostics_js | 7d? | 2016-09-22 | 2016-10-08 | 95 | 陈新春; 张邺 |
| 101 | driver_plugin | 7d? | 2016-09-23 | 2016-10-10 | 96 | 张邺 |
| 109 | rosbridge_shell | 1d? | 2016-10-10 | 2016-10-11 | 101 |  |
| 120 | universal_suspension | 1d? | 2016-08-01 | 2016-08-02 |  |  |
| 126 | hector_exploration | 1d? | 2016-08-01 | 2016-08-02 |  |  |
| 138 | global_coordinate | 1d? | 2016-08-01 | 2016-08-02 |  |  |

Changed:

| ID | Task | Start | Finish | Duration | Complete | Total float | Predecessors | Other |
| --- | --- | --- | --- | --- | --- | --- | --- | --- |
| 61 | **lidar_forklift** |  | 2016-11-22 → 2016-11-17 (-5d) | 76d? → 73d? | 30% → 41% |  |  |  |
| 65 | chassis_zoe |  | 2016-09-28 → 2016-09-23 A (-5d) | 14d? → 11d | 38% → 100% | 0d → none |  |  |
| 66 | drive_aqmd |  | 2016-10-20 → 2016-09-30 (-20d) |  | 25% → 50% | 22.75d → 29.75d | 59, 67 → 59, 65 |  |
| 67 | plc_replacement | 2016-09-28 → 2016-09-23 A (-5d) | 2016-10-13 → 2016-10-10 (-3d) |  | 0% → 25% | 0d → 28d |  |  |
| 68 | hector_mapping | 2016-09-28 → 2016-09-23 A (-5d) | 2016-10-13 → 2016-10-10 (-3d) |  | 0% → 25% |  |  |  |
| 69 | teb_local_planner | 2016-09-28 → 2016-09-23 (-5d) | 2016-10-13 → 2016-10-10 (-3d) |  |  |  |  |  |
| 70 | robot_localization | 2016-10-13 → 2016-10-10 (-3d) | 2016-10-24 → 2016-10-19 (-5d) |  |  |  |  |  |
| 71 | chassis_miniqiu |  | 2016-10-25 → 2016-10-20 (-5d) |  |  |  |  |  |
| 72 | lift_testing | 2016-10-24 → 2016-10-19 (-5d) | 2016-11-02 → 2016-10-28 (-5d) |  |  |  |  |  |
| 73 | navigation_testing | 2016-11-02 → 2016-10-28 (-5d) | 2016-11-22 → 2016-11-17 (-5d) |  |  |  |  |  |
| 75 | **ros_org** |  | 2016-10-10 → 2016-10-19 (+9d) | 45d? → 52d? | 71% → 65% | 31d → 21d |  |  |
| 96 | rosbridge_driver |  | 2016-09-22 A → 2016-09-23 A (+1d) | 7d → 8d |  |  |  |  |
| 97 | pocket_sphinx_js |  | 2016-09-20 → 2016-09-28 (+8d) | 1d? → 7d? |  | 39d → 30d |  | was named pocket_sphnix; resources none → 陆亚辉; 陈新春 |
| 98 | terminal_navigator |  |  |  | 25% → 75% | 32d → 29d |  |  |
| 100 | dhcp_ifconfig | 2016-09-12 → 2016-09-23 (+11d) | 2016-09-13 → 2016-10-10 (+27d) | 1d? → 7d? |  | 45d → 28d | 93 → 93, 96 | resources none → 陈新春; 陆亚辉 |
| 102 | motor_servo | 2016-09-05 → 2016-09-23 (+18d) | 2016-09-06 → 2016-10-10 (+34d) | 1d? → 7d? |  | 50d → 28d | 90 → 90, 96 | resources none → 仇隽挺; 张邺 |
| 106 | speech_semantic | 2016-09-20 → 2016-09-28 (+8d) | 2016-09-21 → 2016-09-29 (+8d) |  |  | 39d → 30d |  |  |
| 107 | speech_tts | 2016-09-21 → 2016-09-29 (+8d) | 2016-09-22 → 2016-09-30 (+8d) |  |  | 39d → 30d |  |  |
| 110 | local_oscilliation | 2016-09-12 → 2016-10-10 (+28d) | 2016-09-13 → 2016-10-11 (+28d) |  |  | 45d → 21d | 93 → 93, 69 |  |
| 111 | time_position_mode | 2016-09-12 → 2016-10-11 (+29d) | 2016-09-13 → 2016-10-12 (+29d) |  |  | 45d → 21d | 93 → 93, 110 |  |
| 112 | odom_feedback | 2016-09-12 → 2016-10-12 (+30d) | 2016-09-13 → 2016-10-13 (+30d) |  |  | 45d → 21d | 93 → 93, 111 |  |
| 113 | navigation_improvement | 2016-09-22 → 2016-10-13 (+21d) | 2016-09-23 → 2016-10-14 (+21d) |  |  | 37.62d → 21d | 95 → 95, 112 |  |
| 114 | velocity_smooth | 2016-09-22 → 2016-10-14 (+22d) | 2016-09-23 → 2016-10-17 (+24d) |  |  | 35.62d → 21d | 95 → 95, 113 |  |
| 115 | velocity_follow | 2016-09-23 → 2016-10-17 (+24d) | 2016-09-26 → 2016-10-18 (+22d) |  |  | 35.62d → 21d |  |  |
| 116 | velocity_filter | 2016-09-26 → 2016-10-18 (+22d) | 2016-09-27 → 2016-10-19 (+22d) |  |  | 35.62d → 21d |  |  |
| 144 | **auto_docking** | 2015-11-30 → 2016-08-01 (+245d) | 2015-12-01 → 2016-08-02 (+245d) |  |  | 251d → 72d |  |  |
| 145 | <新任务> | 2015-11-30 → 2016-08-01 (+245d) | 2015-12-01 → 2016-08-02 (+245d) |  |  | 251d → 72d |  |  |
| 146 | **multi_robots** | 2015-11-30 → 2016-08-01 (+245d) | 2015-12-01 → 2016-08-02 (+245d) |  |  | 251d → 72d |  |  |
| 147 | <新任务> | 2015-11-30 → 2016-08-01 (+245d) | 2015-12-01 → 2016-08-02 (+245d) |  |  | 251d → 72d |  |  |

## Version 6 (saved 2016-09-30)

Last finish stays 2016-11-17.

Added:

| ID | Task | Duration | Start | Finish | Predecessors | Resources |
| --- | --- | --- | --- | --- | --- | --- |
| 101 | driver_stm32wubing | 7d? | 2016-09-23 A | 2016-10-10 | 96 | 张邺 |

Changed:

| ID | Task | Start | Finish | Duration | Complete | Total float | Predecessors |
| --- | --- | --- | --- | --- | --- | --- | --- |
| 61 | **lidar_forklift** |  |  |  | 41% → 45% |  |  |
| 67 | plc_replacement |  |  |  | 25% → 50% |  |  |
| 68 | hector_mapping |  |  |  | 25% → 50% |  |  |
| 69 | teb_local_planner | 2016-09-23 A |  |  | 0% → 25% |  |  |
| 75 | **ros_org** |  | 2016-10-19 → 2016-10-20 (+1d) | 52d? → 53d? | 65% → 66% | 21d → 20d |  |
| 97 | pocket_sphinx_js | 2016-09-19 A |  |  | 0% → 50% |  |  |
| 104 | driver_plugin | 2016-09-23 → 2016-10-10 (+17d) | 2016-10-10 → 2016-10-19 (+9d) |  |  | 27d → 20d | 96 → 96, 101 |
| 110 | rosbridge_shell | 2016-10-10 → 2016-10-19 (+9d) | 2016-10-11 → 2016-10-20 (+9d) |  |  | 27d → 20d | 104 → 104, 101 |
